# COE.Net.Framework

Schedule from MS Project, 2006-01-13 to 2007-03-14, status date 2006-09-19, A marks actual dates.
CambridgeSoft Corporation

## Calendars

- Standard: Mon-Fri 08:00-12:00, 13:00-17:00; Sat-Sun off.

## Resources

| Resource |
| --- |
| Vikas Bhatti |
| Elisa Daly |
| Saurav SenGupta |
| Q3 Swati Gupta |
| David Gosalvez |
| Megean Schoenberg |
| Megha Bansal |
| Peter Hindmarch |
| Sandeep Singhal |
| Leah Bialic |
| Facundo(Bx) |
| Leandro(Bx) |
| Marithio (Bx) |
| Mariana (Bx) |
| Leandro |
| Rohit (Q3) |
| Leandro (Bx) |
| Facuondo (Bx) |
| Sandeep (Q3) |
| Sandeep |

## Schedule

| ID | WBS | Task | Type | Duration | Start | Finish | Predecessors | Complete | Remaining | Total slack | Constraint | Resources | Work | Actual work | Text4 |
| --- | --- | --- | --- | --- | --- | --- | --- | --- | --- | --- | --- | --- | --- | --- | --- |
| 1 | 1 | **Design and Development** |  | 304d? | 2006-01-13 A | 2007-03-14 |  | 25% | 226.76d? | 0d |  |  | 4212.05h | 1364.39h | Leah Bialic,David Gosalvez |
| 2 | 1.1 | **Services Tier** |  | 304d? | 2006-01-13 A | 2007-03-14 |  | 28% | 220.29d? | 0d |  |  | 4132.05h | 1364.39h |  |
| 3 | 1.1.1 | **Create VS2005 Project Based on Services Architecture** |  | 0.38d? | 2006-07-14 A | 2006-07-14 |  | 42% | 0.22d? | 173.62d |  |  | 12h | 5h |  |
| 4 | 1.1.1.1 | CambridgeSoft.COE.Framework |  | 0.38d? | 2006-07-14 A | 2006-07-14 |  | 33% | 0.25d? | 114.62d |  | Leah Bialic | 3h | 1h |  |
| 5 | 1.1.1.2 | CambridgeSoft.COE.Framework.Web (web service façade) |  | 0.12d? | 2006-07-14 A | 2006-07-14 A |  | 100% |  |  |  | Leah Bialic | 1h | 1h |  |
| 6 | 1.1.1.3 | CambridgeSoft.COE.Framework.Ndoc |  | 0.25d? | 2006-07-14 | 2006-07-14 |  |  |  | 114.75d |  | Leah Bialic | 2h |  |  |
| 7 | 1.1.1.4 | CambridgeSoft.COE.Core.Framework.UnitTests |  | 0.25d? | 2006-07-14 A | 2006-07-14 |  | 50% | 0.12d? | 114.75d |  | Leah Bialic | 2h | 1h |  |
| 8 | 1.1.1.5 | CambridgeSoft.COE.Core.Framework.Types |  | 0.25d? | 2006-07-14 A | 2006-07-14 |  | 50% | 0.12d? | 114.75d |  | Leah Bialic | 2h | 1h |  |
| 9 | 1.1.1.6 | CambridgeSoft.COE.Core.Framework.Proxy |  | 0.25d? | 2006-07-14 A | 2006-07-14 |  | 50% | 0.12d? | 114.75d |  | Leah Bialic | 2h | 1h |  |
| 10 | 1.1.2 | **Code Common Service Tier Components** |  | 102d? | 2006-07-14 A | 2006-12-04 |  | 89% | 11.24d? | 72d |  |  | 936h | 846.28h |  |
| 11 | 1.1.2.1 | **DALManager** |  | 4d | 2006-07-14 A | 2006-07-19 |  | 49% | 2.04d | 170d |  | Leah Bialic | 64h | 31.36h |  |
| 12 | 1.1.2.1.1 | Implementation |  | 4d | 2006-07-14 A | 2006-07-19 |  | 49% | 2.04d | 111d |  |  | 32h | 15.68h |  |
| 13 | 1.1.2.2 | **SQLGenerator** |  | 46d? | 2006-10-01 A | 2006-12-04 |  | 92% | 3.57d? | 72d |  | Facundo(Bx); Leandro(Bx) | 872h | 814.92h |  |
| 14 | 1.1.2.2.1 | Oracle Implentation |  | 45d | 2006-10-01 A | 2006-12-01 A |  | 100% |  |  |  |  | 136h | 136h |  |
| 15 | 1.1.2.2.2 | Sql Server Implementation |  | 2d? | 2006-12-01 A | 2006-12-04 |  | 5% | 1.9d? | 13d |  |  |  |  |  |
| 16 | 1.1.2.2.3 | Access Implementation |  | 2d? | 2006-12-01 A | 2006-12-04 |  | 5% | 1.9d? | 13d |  |  |  |  |  |
| 17 | 1.1.3 | **Code Services** |  | 304d? | 2006-01-13 A | 2007-03-14 |  | 17% | 251.87d? | 0d |  |  | 3184.05h | 513.11h |  |
| 18 | 1.1.3.1 | **Search** |  | 59d? | 2006-10-02 A | 2006-12-21 |  | 5% | 55.94d? | 59d |  | Facundo(Bx); Leandro(Bx) | 472.05h | 24.55h |  |
| 19 | 1.1.3.1.1 | Design |  | 23.5d? | 2006-10-02 | 2006-11-02 |  |  |  | 35.5d | start no earlier than 2006-10-02 |  |  |  |  |
| 20 | 1.1.3.1.2 | Public Methods (manager) |  | 1d? | 2006-11-20 | 2006-11-20 |  |  |  | 23d | start no earlier than 2006-11-20 |  |  |  |  |
| 21 | 1.1.3.1.3 | Oracle DAL | milestone | 0d? | 2006-12-01 A | 2006-12-01 A |  | 100% |  |  | start no earlier than 2006-12-04 |  |  |  |  |
| 22 | 1.1.3.1.4 | Access DAL |  | 13d? | 2006-12-05 A | 2006-12-21 |  | 15% | 11d? | 59d | start no earlier than 2006-12-05 |  |  |  |  |
| 23 | 1.1.3.1.5 | SQLServer DAL |  | 1d? | 2006-11-27 | 2006-11-27 |  |  |  | 18d | start no earlier than 2006-11-27 |  |  |  |  |
| 24 | 1.1.3.2 | **HitList** |  | 45d? | 2006-10-16 A | 2006-12-15 |  | 92% | 3.68d? | 63d |  | Megha Bansal | 488h | 459.2h |  |
| 25 | 1.1.3.2.1 | Design |  | 2d? | 2006-10-16 A | 2006-10-17 A |  | 100% |  |  |  |  | 16h | 16h |  |
| 26 | 1.1.3.2.2 | Public Methods (manager) |  | 15d? | 2006-10-26 A | 2006-11-15 A | 25 | 100% |  |  |  |  | 120h | 120h |  |
| 27 | 1.1.3.2.3 | Oracle DAL |  | 26d? | 2006-10-27 A | 2006-12-01 A | 26 | 100% |  |  |  |  |  |  |  |
| 28 | 1.1.3.2.4 | Access DAL |  | 7d | 2006-12-01 A | 2006-12-11 A | 27 | 100% |  |  | finish no earlier than 2006-12-14 |  |  |  |  |
| 29 | 1.1.3.2.5 | SQLServer DAL |  | 5d | 2006-12-11 A | 2006-12-15 |  | 10% | 4.5d | 4d | finish no earlier than 2006-12-14 |  |  |  |  |

| ID | WBS | Task | Duration | Start | Finish | Complete | Remaining | Total slack | Constraint | Resources | Work | Actual work |
| --- | --- | --- | --- | --- | --- | --- | --- | --- | --- | --- | --- | --- |
| 30 | 1.1.3.3 | **Query Criteria** | 1d? | 2006-01-13 | 2006-01-13 |  |  | 303d |  | Megha Bansal | 8h |  |
| 31 | 1.1.3.3.1 | Design | 1d? | 2006-01-13 | 2006-01-13 |  |  | 303d | finish no earlier than 2006-01-13 |  |  |  |
| 32 | 1.1.3.3.2 | Implementation | 1d? | 2006-01-13 | 2006-01-13 |  |  | 303d | finish no earlier than 2006-01-13 |  |  |  |
| 33 | 1.1.3.4 | **Configuration** | 44d? | 2006-12-01 A | 2007-01-31 | 2% | 42.96d? | 30d |  | Leah Bialic; Marithio (Bx) | 712h | 22.96h |
| 34 | 1.1.3.4.1 | Design (there is also a presentation tier component) | 1d? | 2006-12-01 A | 2006-12-01 | 80% | 0.2d? | 73d |  |  | 8h | 6.4h |
| 35 | 1.1.3.4.2 | Implemenation | 33d? | 2006-12-18 | 2007-01-31 |  |  | 30d | finish no earlier than 2007-01-31 |  |  |  |
| 36 | 1.1.3.5 | **DataView** | 29d? | 2006-12-01 | 2007-01-10 |  |  | 45d |  | Sandeep | 232h |  |
| 37 | 1.1.3.5.1 | Design | 1d? | 2006-12-01 | 2006-12-01 |  |  | 73d | start no earlier than 2006-12-01 |  |  |  |
| 38 | 1.1.3.5.2 | Implementation | 21d | 2006-12-13 | 2007-01-10 |  |  | 45d | start no earlier than 2006-12-13 |  |  |  |
| 39 | 1.1.3.6 | **Database Publishing** | 24d? | 2007-01-15 A | 2007-02-15 | 3% | 23.23d? | 19d |  | Megha Bansal | 208h | 6.4h |
| 40 | 1.1.3.6.1 | Design (mimis schema management) | 24d? | 2007-01-15 A | 2007-02-15 | 3% | 23.2d? | 19d | finish no earlier than 2007-02-15 |  | 8h | 6.4h |
| 41 | 1.1.3.6.2 | Implementation | 1d? | 2007-01-15 | 2007-01-15 |  |  | 42d | start no earlier than 2007-01-15 |  | 8h |  |
| 42 | 1.1.3.7 | **Form** | 30d | 2007-02-01 | 2007-03-14 |  |  | 0d |  | Facundo(Bx); Leandro(Bx) | 480h |  |
| 43 | 1.1.3.7.1 | Design | 30d | 2007-02-01 | 2007-03-14 |  |  | 0d | start no earlier than 2007-02-01 |  |  |  |
| 44 | 1.1.3.7.2 | Public Methods | 30d | 2007-02-01 | 2007-03-14 |  |  | 0d | start no earlier than 2007-02-01 |  |  |  |
| 45 | 1.1.3.8 | **Membership** | 24d? | 2006-11-16 | 2006-12-20 |  |  | 61d |  | Sandeep (Q3) | 192h |  |
| 46 | 1.1.3.8.1 | Design (port from cs_security scripts) | 24d? | 2006-11-16 | 2006-12-20 |  |  | 61d | finish no earlier than 2006-12-20 |  |  |  |
| 47 | 1.1.3.8.2 | Public Methods (manager) | 1d? | 2006-12-19 | 2006-12-20 |  |  | 61d | finish no earlier than 2006-12-20 |  |  |  |
| 48 | 1.1.3.8.3 | Oracle DAL | 1d? | 2006-12-19 | 2006-12-20 |  |  | 61d | finish no earlier than 2006-12-20 |  |  |  |
| 49 | 1.1.3.9 | **Role** | 24d? | 2006-11-16 | 2006-12-20 |  |  | 61d |  | Sandeep (Q3) | 192h |  |
| 50 | 1.1.3.9.1 | Design (port from cs_security scripts) | 24d? | 2006-11-16 | 2006-12-20 |  |  | 61d | finish no earlier than 2006-12-20 |  |  |  |
| 51 | 1.1.3.9.2 | Public Methods (manager) | 1d? | 2006-12-19 | 2006-12-20 |  |  | 61d | finish no earlier than 2006-12-20 |  |  |  |
| 52 | 1.1.3.9.3 | Oracle DAL | 1d? | 2006-12-19 | 2006-12-20 |  |  | 61d | finish no earlier than 2006-12-20 |  |  |  |
| 53 | 1.1.3.10 | **Privilege** | 25d? | 2006-11-16 | 2006-12-20 |  |  | 60d |  | Sandeep (Q3) | 200h |  |
| 54 | 1.1.3.10.1 | Design (port from cs_security scripts) | 25d? | 2006-11-16 | 2006-12-20 |  |  | 60d | finish no earlier than 2006-12-20 |  |  |  |
| 55 | 1.1.3.10.2 | Public Methods (manager) | 1d? | 2006-12-20 | 2006-12-20 |  |  | 60d | finish no earlier than 2006-12-20 |  |  |  |
| 56 | 1.1.3.10.3 | Oracle DAL | 1d? | 2006-12-20 | 2006-12-20 |  |  | 60d | finish no earlier than 2006-12-20 |  |  |  |

| ID | WBS | Task | Duration | Start | Finish | Total slack | Deadline | Resources | Work |
| --- | --- | --- | --- | --- | --- | --- | --- | --- | --- |
| 57 | 1.2 | **Presentation Tier** | 2d? | 2006-07-14 | 2006-07-17 | 46d | 2006-09-19 |  | 80h |
| 58 | 1.2.1 | **Code Common Presentation Tier Components** | 2d? | 2006-07-14 | 2006-07-17 | 46d | 2006-09-19 |  | 80h |
| 59 | 1.2.1.1 | **GUI design** | 2d? | 2006-07-14 | 2006-07-17 | 46d |  | Mariana (Bx) | 48h |
| 60 | 1.2.1.1.1 | Storyboard Creation | 2d? | 2006-07-14 | 2006-07-17 | 46d |  |  |  |
| 61 | 1.2.1.1.2 | Storyboard Review | 1d? | 2006-07-14 | 2006-07-14 | 47d |  | Leah Bialic; David Gosalvez | 16h |
| 62 | 1.2.1.1.3 | Common GUI Sign off | 1d? | 2006-07-14 | 2006-07-14 | 47d |  | Leah Bialic; David Gosalvez | 16h |
| 63 | 1.2.1.1.4 | Creation of Templates from StoryBoard | 1d? | 2006-07-14 | 2006-07-14 | 47d |  |  |  |
| 64 | 1.2.1.2 | **Applications** | 1d? | 2006-07-14 | 2006-07-14 | 47d |  |  |  |
| 65 | 1.2.1.2.1 | Sample Application | 1d? | 2006-07-14 | 2006-07-14 | 47d |  |  |  |
| 66 | 1.2.1.2.2 | Schema Manager | 1d? | 2006-07-14 | 2006-07-14 | 47d |  |  |  |
| 67 | 1.2.1.2.3 | Configuration App | 1d? | 2006-07-14 | 2006-07-14 | 47d |  |  |  |
| 68 | 1.2.1.2.4 | Security (Oracle only) | 1d? | 2006-07-14 | 2006-07-14 | 47d |  |  |  |
| 69 | 1.2.1.2.5 | Form Designer | 1d? | 2006-07-14 | 2006-07-14 | 47d |  |  |  |
| 70 | 1.2.1.3 | **Server Controls** | 1d? | 2006-07-14 | 2006-07-14 | 47d |  |  | 32h |
| 71 | 1.2.1.3.1 | **ChemDraw** | 1d? | 2006-07-14 | 2006-07-14 | 47d |  | Leandro (Bx) | 8h |
| 72 | 1.2.1.3.1.1 | Design | 1d? | 2006-07-14 | 2006-07-14 | 47d |  |  |  |
| 73 | 1.2.1.3.1.2 | Development | 1d? | 2006-07-14 | 2006-07-14 | 47d |  |  |  |
| 74 | 1.2.1.3.1.3 | Unit Test | 1d? | 2006-07-14 | 2006-07-14 | 47d |  |  |  |
| 75 | 1.2.1.3.2 | **QueryInput** | 1d? | 2006-07-14 | 2006-07-14 | 47d |  |  |  |
| 76 | 1.2.1.3.2.1 | Design | 1d? | 2006-07-14 | 2006-07-14 | 47d |  |  |  |
| 77 | 1.2.1.3.2.2 | Development | 1d? | 2006-07-14 | 2006-07-14 | 47d |  |  |  |
| 78 | 1.2.1.3.2.3 | Unit Test | 1d? | 2006-07-14 | 2006-07-14 | 47d |  |  |  |
| 79 | 1.2.1.3.3 | **HitListManager** | 1d? | 2006-07-14 | 2006-07-14 | 47d |  |  |  |
| 80 | 1.2.1.3.3.1 | Design | 1d? | 2006-07-14 | 2006-07-14 | 47d |  |  |  |
| 81 | 1.2.1.3.3.2 | Development | 1d? | 2006-07-14 | 2006-07-14 | 47d |  |  |  |
| 82 | 1.2.1.3.3.3 | Unit Test | 1d? | 2006-07-14 | 2006-07-14 | 47d |  |  |  |

| ID | WBS | Task | Type | Duration | Start | Finish | Predecessors | Total slack | Free slack | Resources | Work |
| --- | --- | --- | --- | --- | --- | --- | --- | --- | --- | --- | --- |
| 83 | 1.2.1.3.4 | **ExportTemplateManager** |  | 1d? | 2006-07-14 | 2006-07-14 |  | 47d |  |  |  |
| 84 | 1.2.1.3.4.1 | Design |  | 1d? | 2006-07-14 | 2006-07-14 |  | 47d |  |  |  |
| 85 | 1.2.1.3.4.2 | Development |  | 1d? | 2006-07-14 | 2006-07-14 |  | 47d |  |  |  |
| 86 | 1.2.1.3.4.3 | Unit Test |  | 1d? | 2006-07-14 | 2006-07-14 |  | 47d |  |  |  |
| 87 | 1.2.1.3.5 | **FormDisplay** |  | 1d? | 2006-07-14 | 2006-07-14 |  | 47d |  | Facuondo (Bx); Leandro (Bx) | 16h |
| 88 | 1.2.1.3.5.1 | Design |  | 1d? | 2006-07-14 | 2006-07-14 |  | 47d |  |  |  |
| 89 | 1.2.1.3.5.2 | Development |  | 1d? | 2006-07-14 | 2006-07-14 |  | 47d |  |  |  |
| 90 | 1.2.1.3.5.3 | Unit Test |  | 1d? | 2006-07-14 | 2006-07-14 |  | 47d |  |  |  |
| 91 | 1.2.1.3.6 | **QueryCriteriaManager** |  | 1d? | 2006-07-14 | 2006-07-14 |  | 47d |  |  |  |
| 92 | 1.2.1.3.6.1 | Design |  | 1d? | 2006-07-14 | 2006-07-14 |  | 47d |  |  |  |
| 93 | 1.2.1.3.6.2 | Development |  | 1d? | 2006-07-14 | 2006-07-14 |  | 47d |  |  |  |
| 94 | 1.2.1.3.6.3 | Unit Test |  | 1d? | 2006-07-14 | 2006-07-14 |  | 47d |  |  |  |
| 95 | 1.2.1.3.7 | **ResultsDisplayGrid** |  | 1d? | 2006-07-14 | 2006-07-14 |  | 47d |  | Rohit (Q3) | 8h |
| 96 | 1.2.1.3.7.1 | Design |  | 1d? | 2006-07-14 | 2006-07-14 |  | 47d |  |  |  |
| 97 | 1.2.1.3.7.2 | Development |  | 1d? | 2006-07-14 | 2006-07-14 |  | 47d |  |  |  |
| 98 | 1.2.1.3.7.3 | Unit Test |  | 1d? | 2006-07-14 | 2006-07-14 |  | 47d |  |  |  |
| 99 | 2 | **Installers** |  | 1d? | 2006-07-14 | 2006-07-14 |  | 173d |  |  |  |
| 100 | 2.1 | Design |  | 1d? | 2006-07-14 | 2006-07-14 |  | 173d |  |  |  |
| 101 | 2.2 | Write Build Script |  | 1d? | 2006-07-14 | 2006-07-14 |  | 173d |  |  |  |
| 102 | 2.3 | Build Installer using Build process | milestone | 1d? | 2006-07-14 | 2006-07-14 |  | 173d |  |  |  |
| 103 | 3 | **Testing and QA** |  | 0d | 2006-07-14 | 2006-07-14 |  | 174d |  |  |  |
| 104 | 3.1 | Create Installation Qualification (IQ) | milestone | 0d | 2006-07-14 | 2006-07-14 |  | 174d | 0d |  |  |
| 105 | 3.2 | Validate IQ | milestone | 0d | 2006-07-14 | 2006-07-14 | 104 | 174d | 0d |  |  |
| 106 | 3.3 | Write Test Scripts for Web services | milestone | 0d | 2006-07-14 | 2006-07-14 | 105 | 174d | 0d |  |  |
| 107 | 3.4 | Write Test Plans based on Presentation Tier WorkFlow Scenarios | milestone | 0d | 2006-07-14 | 2006-07-14 | 106 | 174d | 0d |  |  |
| 108 | 3.5 | Execute Test Plans | milestone | 0d | 2006-07-14 | 2006-07-14 | 107 | 174d | 0d |  |  |
| 109 | 3.6 | Execute Web Service Test scripts | milestone | 0d | 2006-07-14 | 2006-07-14 | 108 | 174d | 0d |  |  |
| 110 | 3.7 | Ad hoc Testing | milestone | 0d | 2006-07-14 | 2006-07-14 | 109 | 174d | 0d |  |  |
| 111 | 3.8 | 0 Bug Count | milestone | 0d | 2006-07-14 | 2006-07-14 | 110 | 174d | 0d |  |  |
| 112 | 3.9 | FC1 (dll signing) | milestone | 0d | 2006-07-14 | 2006-07-14 | 111 | 174d | 0d |  |  |
| 113 | 3.10 | FC2 | milestone | 0d | 2006-07-14 | 2006-07-14 | 112 | 174d |  |  |  |

| ID | WBS | Task | Type | Duration | Start | Finish | Predecessors | Total slack | Free slack | Resources |
| --- | --- | --- | --- | --- | --- | --- | --- | --- | --- | --- |
| 114 | 3.11 | **Final Release** |  | 0d | 2006-07-14 | 2006-07-14 |  | 174d |  |  |
| 115 | 3.11.1 | Final Release Testing and QA | milestone | 0d | 2006-07-14 | 2006-07-14 |  | 174d |  |  |
| 116 | 3.11.2 | Signoff (RTM) | milestone | 0d | 2006-07-14 | 2006-07-14 |  | 174d |  |  |
| 117 | 4 | **Documentation** |  | 0d | 2006-07-14 | 2006-07-14 |  | 174d |  |  |
| 118 | 4.1 | **End User** |  | 0d | 2006-07-14 | 2006-07-14 |  | 174d | 0d | Saurav SenGupta |
| 119 | 4.1.1 | User Guide | milestone | 0d | 2006-07-14 | 2006-07-14 |  | 174d |  |  |
| 120 | 4.2 | **Development SDK** |  | 0d | 2006-07-14 | 2006-07-14 | 118 | 174d | 0d |  |
| 121 | 4.2.1 | NDOC (built as part of build process) | milestone | 0d | 2006-07-14 | 2006-07-14 |  | 174d |  |  |
| 122 | 4.3 | **Requirements** |  | 0d | 2006-07-14 | 2006-07-14 | 120 | 174d | 0d | Q3 Swati Gupta |
| 123 | 4.3.1 | Write Functional Requirements Specification | milestone | 0d | 2006-07-14 | 2006-07-14 |  | 174d | 0d |  |
| 124 | 4.3.2 | Write Services Tier Software RS | milestone | 0d | 2006-07-14 | 2006-07-14 | 123 | 174d | 0d |  |
| 125 | 4.3.3 | Write Presentation Tier SRS | milestone | 0d | 2006-07-14 | 2006-07-14 | 124 | 174d |  |  |
| 126 | 4.4 | **Admin** |  | 0d | 2006-07-14 | 2006-07-14 | 122 | 174d |  | Q3 Swati Gupta |
| 127 | 4.4.1 | Data Model | milestone | 0d | 2006-07-14 | 2006-07-14 |  | 174d | 0d |  |
| 128 | 4.4.2 | Installation Instructions | milestone | 0d | 2006-07-14 | 2006-07-14 | 127 | 174d | 0d |  |
| 129 | 4.4.3 | Readme (Release Notes) | milestone | 0d | 2006-07-14 | 2006-07-14 | 128 | 174d |  |  |
