# COE.Net.Registration

Schedule from MS Project, 2006-07-14 to 2007-05-11, status date 2006-09-19, A marks actual dates.
CambridgeSoft Corporation

## Calendars

- Standard: Mon-Fri 08:00-12:00, 13:00-17:00; Sat-Sun off.

## Resources

| Resource |
| --- |
| Peter Vakhutinsky |
| Sunny Yan |
| Vikas Bhatti |
| Elisa Daly |
| Saurav SenGupta |
| Q3 Swati Gupta |
| Daryl Paraguya |
| David Gosalvez |
| Facundo Galdeano |
| Megean Schoenberg |
| Megha Bansal |
| Nophadon Sounthala |
| Peter Hindmarch |
| Sandeep Singhal |
| Sumita |
| Leah Bialic |

## Schedule

| ID | WBS | Task | Duration | Start | Finish | Predecessors | Complete | Remaining | Total slack | Free slack | Constraint | Resources | Work | Actual work | Text4 | Text1 |
| --- | --- | --- | --- | --- | --- | --- | --- | --- | --- | --- | --- | --- | --- | --- | --- | --- |
| 1 | 1 | **Design and Development** | 216d? | 2006-07-14 A | 2007-05-11 |  | 36% | 138.51d? | 0d |  |  |  | 1248h | 646.4h | Leah Bialic,David Gosalvez |  |
| 2 | 1.1 | **Services Tier** | 149d? | 2006-07-14 A | 2007-02-07 |  | 52% | 71.37d? | -3d | 0d |  |  | 1248h | 646.4h |  |  |
| 3 | 1.1.1 | Design | 1d? | 2006-07-14 A | 2006-07-14 A |  | 100% |  |  |  |  |  |  |  |  |  |
| 4 | 1.1.2 | **Code Services** | 148d | 2006-07-17 A | 2007-02-07 |  | 52% | 71.34d | -3d | 0d |  |  | 1248h | 646.4h |  |  |
| 5 | 1.1.2.1 | **Create VS2005 Project Based on Services Architecture** | 6d | 2006-07-17 A | 2006-07-24 A |  | 100% |  |  |  |  |  | 48h | 48h |  |  |
| 6 | 1.1.2.1.1 | CambridgeSoft.COE.Registration.Services | 3d | 2006-07-17 A | 2006-07-19 A |  | 100% |  |  |  | start no earlier than 2006-07-17 | Leah Bialic | 24h | 24h |  |  |
| 7 | 1.1.2.1.2 | CambridgeSoft.COE.Core.Registration.Web (web service façade) | 1d | 2006-07-20 A | 2006-07-20 A | 6 | 100% |  |  |  |  | Leah Bialic | 8h | 8h |  |  |
| 8 | 1.1.2.1.3 | CambridgeSoft.COE.Core.Registration.Ndoc | 1d | 2006-07-21 A | 2006-07-21 A | 7 | 100% |  |  |  |  | Leah Bialic | 8h | 8h |  |  |
| 9 | 1.1.2.1.4 | CambridgeSoft.COE.Core.Registration.UnitTests | 1d | 2006-07-24 A | 2006-07-24 A | 8 | 100% |  |  |  |  | Leah Bialic | 8h | 8h |  |  |
| 10 | 1.1.2.2 | Generate Sample XML Data | 1d | 2006-07-17 A | 2006-07-17 |  | 80% | 0.2d | -21d | 0d |  | Sunny Yan | 8h | 6.4h |  |  |
| 11 | 1.1.2.3 | **PreRegisteredCompound Service** | 42d | 2006-07-25 A | 2006-09-20 | 10 | 51% | 20.51d | -3d | 0d |  |  | 344h | 176h |  |  |
| 12 | 1.1.2.3.1 | Write Design Docs | 1d | 2006-07-25 A | 2006-07-25 A |  | 100% |  |  |  |  | Sunny Yan | 8h | 8h |  |  |
| 13 | 1.1.2.3.2 | **Public Methods** | 42d | 2006-07-25 A | 2006-09-20 |  | 50% | 21d | -3d | 0d |  |  | 336h | 168h |  |  |
| 14 | 1.1.2.3.2.1 | **Check** | 6d | 2006-07-25 A | 2006-08-01 |  | 50% | 3d | -3d | 0d |  |  | 48h | 24h |  | Check for duplicates |
| 15 | 1.1.2.3.2.1.1 | c# code | 1d | 2006-07-25 A | 2006-07-25 A |  | 100% |  |  |  | start no earlier than 2006-07-20 | Sunny Yan | 8h | 8h |  |  |
| 16 | 1.1.2.3.2.1.2 | pl/sql 1st pass | 2d | 2006-07-26 A | 2006-07-27 A | 15 | 100% |  |  |  |  | Sunny Yan | 16h | 16h |  |  |
| 17 | 1.1.2.3.2.1.3 | pl/sql final | 3d | 2006-07-28 | 2006-08-01 | 16 |  |  | -32d | 0d |  | Peter Vakhutinsky | 24h |  |  |  |
| 18 | 1.1.2.3.2.2 | **Add** | 6d | 2006-08-02 A | 2006-08-09 | 14 | 50% | 3d | -3d | 0d |  |  | 48h | 24h |  | Add a compound(s) to temp table |
| 19 | 1.1.2.3.2.2.1 | c# code | 1d | 2006-08-02 A | 2006-08-02 A |  | 100% |  |  |  | start no earlier than 2006-07-20 | Sunny Yan | 8h | 8h |  |  |
| 20 | 1.1.2.3.2.2.2 | pl/sql 1st pass | 2d | 2006-08-03 A | 2006-08-04 A | 19 | 100% |  |  |  |  | Sunny Yan | 16h | 16h |  |  |
| 21 | 1.1.2.3.2.2.3 | pl/sql final | 3d | 2006-08-07 | 2006-08-09 | 20 |  |  | -38d | 0d |  | Peter Vakhutinsky | 24h |  |  |  |
| 22 | 1.1.2.3.2.3 | **Edit** | 6d | 2006-08-10 A | 2006-08-17 | 18 | 50% | 3d | -3d | 0d |  |  | 48h | 24h |  | Add a compound(s) to temp table |
| 23 | 1.1.2.3.2.3.1 | c# code | 1d | 2006-08-10 A | 2006-08-10 A |  | 100% |  |  |  | start no earlier than 2006-07-20 | Sunny Yan | 8h | 8h |  |  |
| 24 | 1.1.2.3.2.3.2 | pl/sql 1st pass | 2d | 2006-08-11 A | 2006-08-14 A | 23 | 100% |  |  |  |  | Sunny Yan | 16h | 16h |  |  |
| 25 | 1.1.2.3.2.3.3 | pl/sql final | 3d | 2006-08-15 | 2006-08-17 | 24 |  |  | -44d | 0d |  | Peter Vakhutinsky | 24h |  |  |  |

| ID | WBS | Task | Duration | Start | Finish | Predecessors | Complete | Remaining | Total slack | Free slack | Constraint | Resources | Work | Actual work | Text1 |
| --- | --- | --- | --- | --- | --- | --- | --- | --- | --- | --- | --- | --- | --- | --- | --- |
| 26 | 1.1.2.3.2.4 | **Delete** | 6d | 2006-08-18 A | 2006-08-25 | 22 | 50% | 3d | -3d | 0d |  |  | 48h | 24h | Add a compound(s) to temp table |
| 27 | 1.1.2.3.2.4.1 | c# code | 1d | 2006-08-18 A | 2006-08-18 A |  | 100% |  |  |  | start no earlier than 2006-07-20 | Sunny Yan | 8h | 8h |  |
| 28 | 1.1.2.3.2.4.2 | pl/sql 1st pass | 2d | 2006-08-21 A | 2006-08-22 A | 27 | 100% |  |  |  |  | Sunny Yan | 16h | 16h |  |
| 29 | 1.1.2.3.2.4.3 | pl/sql final | 3d | 2006-08-23 | 2006-08-25 | 28 |  |  | -50d | 0d |  | Peter Vakhutinsky | 24h |  |  |
| 30 | 1.1.2.3.2.5 | **Register** | 6d | 2006-08-28 A | 2006-09-04 | 26 | 50% | 3d | -3d | 0d |  |  | 48h | 24h | Add a compound(s) to temp table |
| 31 | 1.1.2.3.2.5.1 | c# code | 1d | 2006-08-28 A | 2006-08-28 A |  | 100% |  |  |  | start no earlier than 2006-07-20 | Sunny Yan | 8h | 8h |  |
| 32 | 1.1.2.3.2.5.2 | pl/sql 1st pass | 2d | 2006-08-29 A | 2006-08-30 A | 31 | 100% |  |  |  |  | Sunny Yan | 16h | 16h |  |
| 33 | 1.1.2.3.2.5.3 | pl/sql final | 3d | 2006-08-31 | 2006-09-04 | 32 |  |  | -56d | 0d |  | Peter Vakhutinsky | 24h |  |  |
| 34 | 1.1.2.3.2.6 | **AssociateSalt** | 6d | 2006-09-05 A | 2006-09-12 | 30 | 50% | 3d | -3d | 0d |  |  | 48h | 24h | Add a compound(s) to temp table |
| 35 | 1.1.2.3.2.6.1 | c# code | 1d | 2006-09-05 A | 2006-09-05 A |  | 100% |  |  |  | start no earlier than 2006-07-20 | Sunny Yan | 8h | 8h |  |
| 36 | 1.1.2.3.2.6.2 | pl/sql 1st pass | 2d | 2006-09-06 A | 2006-09-07 A | 35 | 100% |  |  |  |  | Sunny Yan | 16h | 16h |  |
| 37 | 1.1.2.3.2.6.3 | pl/sql final | 3d | 2006-09-08 | 2006-09-12 | 36 |  |  | -62d | 0d |  | Peter Vakhutinsky | 24h |  |  |
| 38 | 1.1.2.3.2.7 | **Approve** | 6d | 2006-09-13 A | 2006-09-20 | 34 | 50% | 3d | -3d | 0d |  |  | 48h | 24h | Add a compound(s) to temp table |
| 39 | 1.1.2.3.2.7.1 | c# code | 1d | 2006-09-13 A | 2006-09-13 A |  | 100% |  |  |  | start no earlier than 2006-07-20 | Sunny Yan | 8h | 8h |  |
| 40 | 1.1.2.3.2.7.2 | pl/sql 1st pass | 2d | 2006-09-14 A | 2006-09-15 A | 39 | 100% |  |  |  |  | Sunny Yan | 16h | 16h |  |
| 41 | 1.1.2.3.2.7.3 | pl/sql final | 3d | 2006-09-18 | 2006-09-20 | 40 |  |  | -68d | 0d |  | Peter Vakhutinsky | 24h |  |  |
| 42 | 1.1.2.4 | **RegisteredCompound Service** | 37d | 2006-09-21 A | 2006-11-10 | 11 | 44% | 20.65d | -3d | 0d |  |  | 344h | 152h |  |
| 43 | 1.1.2.4.1 | Write Design Docs | 1d | 2006-09-21 A | 2006-09-21 A |  | 100% |  |  |  |  | Sunny Yan | 8h | 8h |  |
| 44 | 1.1.2.4.2 | **Public Methods** | 36d | 2006-09-22 A | 2006-11-10 | 43 | 43% | 20.57d | -3d | 0d |  |  | 336h | 144h |  |
| 45 | 1.1.2.4.2.1 | **Check** | 6d | 2006-09-22 A | 2006-09-29 |  | 50% | 3d | -3d | 0d |  |  | 48h | 24h | Check for duplicates |
| 46 | 1.1.2.4.2.1.1 | c# code | 1d | 2006-09-22 A | 2006-09-22 A |  | 100% |  |  |  | start no earlier than 2006-07-20 | Sunny Yan | 8h | 8h |  |
| 47 | 1.1.2.4.2.1.2 | pl/sql 1st pass | 2d | 2006-09-25 A | 2006-09-26 A | 46 | 100% |  |  |  |  | Sunny Yan | 16h | 16h |  |
| 48 | 1.1.2.4.2.1.3 | pl/sql final | 3d | 2006-09-27 | 2006-09-29 | 47 |  |  | -75d | 0d |  | Peter Vakhutinsky | 24h |  |  |
| 49 | 1.1.2.4.2.2 | **Add (from temp)** | 6d | 2006-10-02 A | 2006-10-09 | 45 | 50% | 3d | -3d | 0d |  |  | 48h | 24h | Add a compound(s) to temp table |
| 50 | 1.1.2.4.2.2.1 | c# code | 1d | 2006-10-02 A | 2006-10-02 A |  | 100% |  |  |  | start no earlier than 2006-07-20 | Sunny Yan | 8h | 8h |  |
| 51 | 1.1.2.4.2.2.2 | pl/sql 1st pass | 2d | 2006-10-03 A | 2006-10-04 A | 50 | 100% |  |  |  |  | Sunny Yan | 16h | 16h |  |
| 52 | 1.1.2.4.2.2.3 | pl/sql final | 3d | 2006-10-05 | 2006-10-09 | 51 |  |  | -81d | 0d |  | Peter Vakhutinsky | 24h |  |  |

| ID | WBS | Task | Duration | Start | Finish | Predecessors | Complete | Remaining | Total slack | Free slack | Constraint | Resources | Work | Actual work | Text1 |
| --- | --- | --- | --- | --- | --- | --- | --- | --- | --- | --- | --- | --- | --- | --- | --- |
| 53 | 1.1.2.4.2.3 | **Add (directly)** | 6d | 2006-09-22 | 2006-09-29 |  |  |  | -75d | 0d |  |  | 48h |  | Add a compound(s) to temp table |
| 54 | 1.1.2.4.2.3.1 | c# code | 1d | 2006-09-22 | 2006-09-22 |  |  |  | -75d | 0d | start no earlier than 2006-07-20 | Sunny Yan | 8h |  |  |
| 55 | 1.1.2.4.2.3.2 | pl/sql 1st pass | 2d | 2006-09-25 | 2006-09-26 | 54 |  |  | -75d | 0d |  | Sunny Yan | 16h |  |  |
| 56 | 1.1.2.4.2.3.3 | pl/sql final | 3d | 2006-09-27 | 2006-09-29 | 55 |  |  | -75d | 0d |  | Peter Vakhutinsky | 24h |  |  |
| 57 | 1.1.2.4.2.4 | **Edit** | 6d | 2006-10-10 A | 2006-10-17 | 49 | 50% | 3d | -3d | 0d |  |  | 48h | 24h | Add a compound(s) to temp table |
| 58 | 1.1.2.4.2.4.1 | c# code | 1d | 2006-10-10 A | 2006-10-10 A |  | 100% |  |  |  | start no earlier than 2006-07-20 | Sunny Yan | 8h | 8h |  |
| 59 | 1.1.2.4.2.4.2 | pl/sql 1st pass | 2d | 2006-10-11 A | 2006-10-12 A | 58 | 100% |  |  |  |  | Sunny Yan | 16h | 16h |  |
| 60 | 1.1.2.4.2.4.3 | pl/sql final | 3d | 2006-10-13 | 2006-10-17 | 59 |  |  | -87d | 0d |  | Peter Vakhutinsky | 24h |  |  |
| 61 | 1.1.2.4.2.5 | **Delete** | 6d | 2006-10-18 A | 2006-10-25 | 57 | 50% | 3d | -3d | 0d |  |  | 48h | 24h | Add a compound(s) to temp table |
| 62 | 1.1.2.4.2.5.1 | c# code | 1d | 2006-10-18 A | 2006-10-18 A |  | 100% |  |  |  | start no earlier than 2006-07-20 | Sunny Yan | 8h | 8h |  |
| 63 | 1.1.2.4.2.5.2 | pl/sql 1st pass | 2d | 2006-10-19 A | 2006-10-20 A | 62 | 100% |  |  |  |  | Sunny Yan | 16h | 16h |  |
| 64 | 1.1.2.4.2.5.3 | pl/sql final | 3d | 2006-10-23 | 2006-10-25 | 63 |  |  | -93d | 0d |  | Peter Vakhutinsky | 24h |  |  |
| 65 | 1.1.2.4.2.6 | **AssociateSalt** | 6d | 2006-10-26 A | 2006-11-02 | 61 | 50% | 3d | -3d | 0d |  |  | 48h | 24h | Add a compound(s) to temp table |
| 66 | 1.1.2.4.2.6.1 | c# code | 1d | 2006-10-26 A | 2006-10-26 A |  | 100% |  |  |  | start no earlier than 2006-07-20 | Sunny Yan | 8h | 8h |  |
| 67 | 1.1.2.4.2.6.2 | pl/sql 1st pass | 2d | 2006-10-27 A | 2006-10-30 A | 66 | 100% |  |  |  |  | Sunny Yan | 16h | 16h |  |
| 68 | 1.1.2.4.2.6.3 | pl/sql final | 3d | 2006-10-31 | 2006-11-02 | 67 |  |  | -99d | 0d |  | Peter Vakhutinsky | 24h |  |  |
| 69 | 1.1.2.4.2.7 | **Approve** | 6d | 2006-11-03 A | 2006-11-10 | 65 | 50% | 3d | -3d | 0d |  |  | 48h | 24h | Add a compound(s) to temp table |
| 70 | 1.1.2.4.2.7.1 | c# code | 1d | 2006-11-03 A | 2006-11-03 A |  | 100% |  |  |  | start no earlier than 2006-07-20 | Sunny Yan | 8h | 8h |  |
| 71 | 1.1.2.4.2.7.2 | pl/sql 1st pass | 2d | 2006-11-06 A | 2006-11-07 A | 70 | 100% |  |  |  |  | Sunny Yan | 16h | 16h |  |
| 72 | 1.1.2.4.2.7.3 | pl/sql final | 3d | 2006-11-08 | 2006-11-10 | 71 |  |  | -105d | 0d |  | Peter Vakhutinsky | 24h |  |  |
| 73 | 1.1.2.5 | **Batch Service** | 25d | 2006-11-13 A | 2006-12-15 | 42 | 52% | 12d | -3d | 0d |  |  | 200h | 104h |  |
| 74 | 1.1.2.5.1 | Write Design Docs | 1d | 2006-11-13 A | 2006-11-13 A |  | 100% |  |  |  |  | Sunny Yan | 8h | 8h |  |
| 75 | 1.1.2.5.2 | **Public Methods** | 24d | 2006-11-14 A | 2006-12-15 | 74 | 50% | 12d | -3d | 0d |  |  | 192h | 96h |  |
| 76 | 1.1.2.5.2.1 | **Add** | 6d | 2006-11-14 A | 2006-11-21 |  | 50% | 3d | -3d | 0d |  |  | 48h | 24h | Add a compound(s) to temp table |
| 77 | 1.1.2.5.2.1.1 | c# code | 1d | 2006-11-14 A | 2006-11-14 A |  | 100% |  |  |  | start no earlier than 2006-07-20 | Sunny Yan | 8h | 8h |  |
| 78 | 1.1.2.5.2.1.2 | pl/sql 1st pass | 2d | 2006-11-15 A | 2006-11-16 A | 77 | 100% |  |  |  |  | Sunny Yan | 16h | 16h |  |
| 79 | 1.1.2.5.2.1.3 | pl/sql final | 3d | 2006-11-17 | 2006-11-21 | 78 |  |  | -112d | 0d |  | Peter Vakhutinsky | 24h |  |  |

| ID | WBS | Task | Duration | Start | Finish | Predecessors | Complete | Remaining | Total slack | Free slack | Constraint | Resources | Work | Actual work | Text1 |
| --- | --- | --- | --- | --- | --- | --- | --- | --- | --- | --- | --- | --- | --- | --- | --- |
| 80 | 1.1.2.5.2.2 | **Edit** | 6d | 2006-11-22 A | 2006-11-29 | 76 | 50% | 3d | -3d | 0d |  |  | 48h | 24h | Add a compound(s) to temp table |
| 81 | 1.1.2.5.2.2.1 | c# code | 1d | 2006-11-22 A | 2006-11-22 A |  | 100% |  |  |  | start no earlier than 2006-07-20 | Sunny Yan | 8h | 8h |  |
| 82 | 1.1.2.5.2.2.2 | pl/sql 1st pass | 2d | 2006-11-23 A | 2006-11-24 A | 81 | 100% |  |  |  |  | Sunny Yan | 16h | 16h |  |
| 83 | 1.1.2.5.2.2.3 | pl/sql final | 3d | 2006-11-27 | 2006-11-29 | 82 |  |  | -118d | 0d |  | Peter Vakhutinsky | 24h |  |  |
| 84 | 1.1.2.5.2.3 | **Delete** | 6d | 2006-11-30 A | 2006-12-07 | 80 | 50% | 3d | -3d | 0d |  |  | 48h | 24h | Add a compound(s) to temp table |
| 85 | 1.1.2.5.2.3.1 | c# code | 1d | 2006-11-30 A | 2006-11-30 A |  | 100% |  |  |  | start no earlier than 2006-07-20 | Sunny Yan | 8h | 8h |  |
| 86 | 1.1.2.5.2.3.2 | pl/sql 1st pass | 2d | 2006-12-01 A | 2006-12-04 A | 85 | 100% |  |  |  |  | Sunny Yan | 16h | 16h |  |
| 87 | 1.1.2.5.2.3.3 | pl/sql final | 3d | 2006-12-05 | 2006-12-07 | 86 |  |  | -124d | 0d |  | Peter Vakhutinsky | 24h |  |  |
| 88 | 1.1.2.5.2.4 | **AssociateSalt** | 6d | 2006-12-08 A | 2006-12-15 | 84 | 50% | 3d | -3d | 0d |  |  | 48h | 24h | Add a compound(s) to temp table |
| 89 | 1.1.2.5.2.4.1 | c# code | 1d | 2006-12-08 A | 2006-12-08 A |  | 100% |  |  |  | start no earlier than 2006-07-20 | Sunny Yan | 8h | 8h |  |
| 90 | 1.1.2.5.2.4.2 | pl/sql 1st pass | 2d | 2006-12-11 A | 2006-12-12 A | 89 | 100% |  |  |  |  | Sunny Yan | 16h | 16h |  |
| 91 | 1.1.2.5.2.4.3 | pl/sql final | 3d | 2006-12-13 | 2006-12-15 | 90 |  |  | -130d | 0d |  | Peter Vakhutinsky | 24h |  |  |
| 92 | 1.1.2.6 | **Fragment Service** | 19d | 2006-12-18 A | 2007-01-11 | 73 | 53% | 9d | -3d | 0d |  |  | 152h | 80h |  |
| 93 | 1.1.2.6.1 | Write Design Docs | 1d | 2006-12-18 A | 2006-12-18 A |  | 100% |  |  |  |  | Sunny Yan | 8h | 8h |  |
| 94 | 1.1.2.6.2 | **Public Methods** | 18d | 2006-12-19 A | 2007-01-11 | 93 | 50% | 9d | -3d | 0d |  |  | 144h | 72h |  |
| 95 | 1.1.2.6.2.1 | **Add Component** | 6d | 2006-12-19 A | 2006-12-26 |  | 50% | 3d | -3d | 0d |  |  | 48h | 24h | Add a compound(s) to temp table |
| 96 | 1.1.2.6.2.1.1 | c# code | 1d | 2006-12-19 A | 2006-12-19 A |  | 100% |  |  |  | start no earlier than 2006-07-20 | Sunny Yan | 8h | 8h |  |
| 97 | 1.1.2.6.2.1.2 | pl/sql 1st pass | 2d | 2006-12-20 A | 2006-12-21 A | 96 | 100% |  |  |  |  | Sunny Yan | 16h | 16h |  |
| 98 | 1.1.2.6.2.1.3 | pl/sql final | 3d | 2006-12-22 | 2006-12-26 | 97 |  |  | -137d | 0d |  | Peter Vakhutinsky | 24h |  |  |
| 99 | 1.1.2.6.2.2 | **Edit Component** | 6d | 2006-12-27 A | 2007-01-03 | 95 | 50% | 3d | -3d | 0d |  |  | 48h | 24h | Add a compound(s) to temp table |
| 100 | 1.1.2.6.2.2.1 | c# code | 1d | 2006-12-27 A | 2006-12-27 A |  | 100% |  |  |  | start no earlier than 2006-07-20 | Sunny Yan | 8h | 8h |  |
| 101 | 1.1.2.6.2.2.2 | pl/sql 1st pass | 2d | 2006-12-28 A | 2006-12-29 A | 100 | 100% |  |  |  |  | Sunny Yan | 16h | 16h |  |
| 102 | 1.1.2.6.2.2.3 | pl/sql final | 3d | 2007-01-01 | 2007-01-03 | 101 |  |  | -143d | 0d |  | Peter Vakhutinsky | 24h |  |  |
| 103 | 1.1.2.6.2.3 | **Remove Component** | 6d | 2007-01-04 A | 2007-01-11 | 99 | 50% | 3d | -3d | 0d |  |  | 48h | 24h | Add a compound(s) to temp table |
| 104 | 1.1.2.6.2.3.1 | c# code | 1d | 2007-01-04 A | 2007-01-04 A |  | 100% |  |  |  | start no earlier than 2006-07-20 | Sunny Yan | 8h | 8h |  |
| 105 | 1.1.2.6.2.3.2 | pl/sql 1st pass | 2d | 2007-01-05 A | 2007-01-08 A | 104 | 100% |  |  |  |  | Sunny Yan | 16h | 16h |  |
| 106 | 1.1.2.6.2.3.3 | pl/sql final | 3d | 2007-01-09 | 2007-01-11 | 105 |  |  | -149d | 0d |  | Peter Vakhutinsky | 24h |  |  |

| ID | WBS | Task | Duration | Start | Finish | Predecessors | Complete | Remaining | Total slack | Free slack | Constraint | Deadline | Resources | Work | Actual work | Text1 |
| --- | --- | --- | --- | --- | --- | --- | --- | --- | --- | --- | --- | --- | --- | --- | --- | --- |
| 107 | 1.1.2.7 | **Mixture Service** | 19d | 2007-01-12 A | 2007-02-07 | 92 | 53% | 9d | -3d | 0d |  |  |  | 152h | 80h |  |
| 108 | 1.1.2.7.1 | Write Design Docs | 1d | 2007-01-12 A | 2007-01-12 A |  | 100% |  |  |  |  |  | Sunny Yan | 8h | 8h |  |
| 109 | 1.1.2.7.2 | **Public Methods** | 18d | 2007-01-15 A | 2007-02-07 | 108 | 50% | 9d | -3d | 0d |  |  |  | 144h | 72h |  |
| 110 | 1.1.2.7.2.1 | **Add** | 6d | 2007-01-15 A | 2007-01-22 |  | 50% | 3d | -3d | 0d |  |  |  | 48h | 24h | Add a compound(s) to temp table |
| 111 | 1.1.2.7.2.1.1 | c# code | 1d | 2007-01-15 A | 2007-01-15 A |  | 100% |  |  |  | start no earlier than 2006-07-20 |  | Sunny Yan | 8h | 8h |  |
| 112 | 1.1.2.7.2.1.2 | pl/sql 1st pass | 2d | 2007-01-16 A | 2007-01-17 A | 111 | 100% |  |  |  |  |  | Sunny Yan | 16h | 16h |  |
| 113 | 1.1.2.7.2.1.3 | pl/sql final | 3d | 2007-01-18 | 2007-01-22 | 112 |  |  | -156d | 0d |  |  | Peter Vakhutinsky | 24h |  |  |
| 114 | 1.1.2.7.2.2 | **Edit** | 6d | 2007-01-23 A | 2007-01-30 | 110 | 50% | 3d | -3d | 0d |  |  |  | 48h | 24h | Add a compound(s) to temp table |
| 115 | 1.1.2.7.2.2.1 | c# code | 1d | 2007-01-23 A | 2007-01-23 A |  | 100% |  |  |  | start no earlier than 2006-07-20 |  | Sunny Yan | 8h | 8h |  |
| 116 | 1.1.2.7.2.2.2 | pl/sql 1st pass | 2d | 2007-01-24 A | 2007-01-25 A | 115 | 100% |  |  |  |  |  | Sunny Yan | 16h | 16h |  |
| 117 | 1.1.2.7.2.2.3 | pl/sql final | 3d | 2007-01-26 | 2007-01-30 | 116 |  |  | -162d | 0d |  |  | Peter Vakhutinsky | 24h |  |  |
| 118 | 1.1.2.7.2.3 | **Delete** | 6d | 2007-01-31 A | 2007-02-07 | 114 | 50% | 3d | -3d | 0d |  |  |  | 48h | 24h | Add a compound(s) to temp table |
| 119 | 1.1.2.7.2.3.1 | c# code | 1d | 2007-01-31 A | 2007-01-31 A |  | 100% |  |  |  | start no earlier than 2006-07-20 |  | Sunny Yan | 8h | 8h |  |
| 120 | 1.1.2.7.2.3.2 | pl/sql 1st pass | 2d | 2007-02-01 A | 2007-02-02 A | 119 | 100% |  |  |  |  |  | Sunny Yan | 16h | 16h |  |
| 121 | 1.1.2.7.2.3.3 | pl/sql final | 3d | 2007-02-05 | 2007-02-07 | 120 |  |  | -168d | 0d |  |  | Peter Vakhutinsky | 24h |  |  |
| 122 | 1.2 | **Presentation Tier** | 67d | 2007-02-08 | 2007-05-11 | 2 |  |  | -168d | 0d |  | 2006-09-19 |  |  |  |  |
| 123 | 1.2.1 | **Registration Application** | 67d | 2007-02-08 | 2007-05-11 |  |  |  | -168d | 0d |  |  |  |  |  |  |
| 124 | 1.2.1.1 | **Create VS2005 Project Based on Services Architecture** | 1d | 2007-02-08 | 2007-02-08 |  |  |  | -102d | 0d |  |  |  |  |  |  |
| 125 | 1.2.1.1.1 | CambridgeSoft.COE.Registration.WebApp | 1d | 2007-02-08 | 2007-02-08 |  |  |  | -102d | 0d |  |  |  |  |  |  |
| 126 | 1.2.1.1.2 | CambridgeSoft.COE.Registration.WebApp.Ndoc | 1d | 2007-02-08 | 2007-02-08 |  |  |  | -102d | 0d |  |  |  |  |  |  |
| 127 | 1.2.1.1.3 | CambridgeSoft.COE.Registration.WebApp.UnitTests | 1d | 2007-02-08 | 2007-02-08 |  |  |  | -102d | 0d |  |  |  |  |  |  |
| 128 | 1.2.1.2 | **Code Application** | 67d | 2007-02-08 | 2007-05-11 |  |  |  | -168d | 0d |  |  |  |  |  |  |
| 129 | 1.2.1.2.1 | **Workflow Scenarios** | 15d | 2007-02-08 | 2007-02-28 |  |  |  | -168d | 0d |  |  |  |  |  |  |
| 130 | 1.2.1.2.1.1 | **PreRegisterCompound** | 3d | 2007-02-08 | 2007-02-12 |  |  |  | -168d | 0d |  |  |  |  |  |  |
| 131 | 1.2.1.2.1.1.1 | GUI Storyboards | 1d | 2007-02-08 | 2007-02-08 |  |  |  | -168d | 0d |  |  |  |  |  |  |
| 132 | 1.2.1.2.1.1.2 | Code ASPX Pages | 2d | 2007-02-09 | 2007-02-12 | 131 |  |  | -168d | 0d |  |  |  |  |  |  |

| ID | WBS | Task | Duration | Start | Finish | Predecessors | Total slack | Free slack |
| --- | --- | --- | --- | --- | --- | --- | --- | --- |
| 133 | 1.2.1.2.1.2 | **EditPreregisteredCompound** | 3d | 2007-02-13 | 2007-02-15 | 130 | -168d | 0d |
| 134 | 1.2.1.2.1.2.1 | GUI Storyboards | 1d | 2007-02-13 | 2007-02-13 |  | -168d | 0d |
| 135 | 1.2.1.2.1.2.2 | Code ASPX Pages | 2d | 2007-02-14 | 2007-02-15 | 134 | -168d | 0d |
| 136 | 1.2.1.2.1.3 | **DeletePreRegisteredCompound** | 3d | 2007-02-16 | 2007-02-20 | 133 | -168d | 0d |
| 137 | 1.2.1.2.1.3.1 | GUI Storyboards | 1d | 2007-02-16 | 2007-02-16 |  | -168d | 0d |
| 138 | 1.2.1.2.1.3.2 | Code ASPX Pages | 2d | 2007-02-19 | 2007-02-20 | 137 | -168d | 0d |
| 139 | 1.2.1.2.1.4 | **RegisterCompound** | 3d | 2007-02-21 | 2007-02-23 | 136 | -168d | 0d |
| 140 | 1.2.1.2.1.4.1 | GUI Storyboards | 1d | 2007-02-21 | 2007-02-21 |  | -168d | 0d |
| 141 | 1.2.1.2.1.4.2 | Code ASPX Pages | 2d | 2007-02-22 | 2007-02-23 | 140 | -168d | 0d |
| 142 | 1.2.1.2.1.5 | **ApproveCompound** | 3d | 2007-02-26 | 2007-02-28 | 139 | -168d | 0d |
| 143 | 1.2.1.2.1.5.1 | GUI Storyboards | 1d | 2007-02-26 | 2007-02-26 |  | -168d | 0d |
| 144 | 1.2.1.2.1.5.2 | Code ASPX Pages | 2d | 2007-02-27 | 2007-02-28 | 143 | -168d | 0d |
| 145 | 1.2.1.2.2 | **Core Work Flow** | 52d | 2007-03-01 | 2007-05-11 | 142 | -168d | 0d |
| 146 | 1.2.1.2.2.1 | **Structure Search** | 3d | 2007-03-01 | 2007-03-05 |  | -168d | 0d |
| 147 | 1.2.1.2.2.1.1 | GUI Storyboards | 1d | 2007-03-01 | 2007-03-01 |  | -168d | 0d |
| 148 | 1.2.1.2.2.1.2 | Code ASPX Pages | 2d | 2007-03-02 | 2007-03-05 | 147 | -168d | 0d |
| 149 | 1.2.1.2.2.2 | **No Structure Search** | 3d | 2007-03-06 | 2007-03-08 | 146 | -168d | 0d |
| 150 | 1.2.1.2.2.2.1 | GUI Storyboards | 1d | 2007-03-06 | 2007-03-06 |  | -168d | 0d |
| 151 | 1.2.1.2.2.2.2 | Code ASPX Pages | 2d | 2007-03-07 | 2007-03-08 | 150 | -168d | 0d |
| 152 | 1.2.1.2.2.3 | **Refine Last Search** | 3d | 2007-03-09 | 2007-03-13 | 149 | -168d | 0d |
| 153 | 1.2.1.2.2.3.1 | GUI Storyboards | 1d | 2007-03-09 | 2007-03-09 |  | -168d | 0d |
| 154 | 1.2.1.2.2.3.2 | Code ASPX Pages | 2d | 2007-03-12 | 2007-03-13 | 153 | -168d | 0d |
| 155 | 1.2.1.2.2.4 | **Save Hitlist** | 3d | 2007-03-14 | 2007-03-16 | 152 | -168d | 0d |
| 156 | 1.2.1.2.2.4.1 | GUI Storyboards | 1d | 2007-03-14 | 2007-03-14 |  | -168d | 0d |
| 157 | 1.2.1.2.2.4.2 | Code ASPX Pages | 2d | 2007-03-15 | 2007-03-16 | 156 | -168d | 0d |

| ID | WBS | Task | Duration | Start | Finish | Predecessors | Total slack | Free slack |
| --- | --- | --- | --- | --- | --- | --- | --- | --- |
| 158 | 1.2.1.2.2.5 | **Restore Hitlist** | 3d | 2007-03-19 | 2007-03-21 | 155 | -168d | 0d |
| 159 | 1.2.1.2.2.5.1 | GUI Storyboards | 1d | 2007-03-19 | 2007-03-19 |  | -168d | 0d |
| 160 | 1.2.1.2.2.5.2 | Code ASPX Pages | 2d | 2007-03-20 | 2007-03-21 | 159 | -168d | 0d |
| 161 | 1.2.1.2.2.6 | **Edit Hitlist** | 3d | 2007-03-22 | 2007-03-26 | 158 | -168d | 0d |
| 162 | 1.2.1.2.2.6.1 | GUI Storyboards | 1d | 2007-03-22 | 2007-03-22 |  | -168d | 0d |
| 163 | 1.2.1.2.2.6.2 | Code ASPX Pages | 2d | 2007-03-23 | 2007-03-26 | 162 | -168d | 0d |
| 164 | 1.2.1.2.2.7 | **Delete Hitlist** | 3d | 2007-03-27 | 2007-03-29 | 161 | -168d | 0d |
| 165 | 1.2.1.2.2.7.1 | GUI Storyboards | 1d | 2007-03-27 | 2007-03-27 |  | -168d | 0d |
| 166 | 1.2.1.2.2.7.2 | Code ASPX Pages | 2d | 2007-03-28 | 2007-03-29 | 165 | -168d | 0d |
| 167 | 1.2.1.2.2.8 | **Merge Hitlist** | 3d | 2007-03-30 | 2007-04-03 | 164 | -168d | 0d |
| 168 | 1.2.1.2.2.8.1 | GUI Storyboards | 1d | 2007-03-30 | 2007-03-30 |  | -168d | 0d |
| 169 | 1.2.1.2.2.8.2 | Code ASPX Pages | 2d | 2007-04-02 | 2007-04-03 | 168 | -168d | 0d |
| 170 | 1.2.1.2.2.9 | **Save Query Criteria** | 3d | 2007-04-04 | 2007-04-06 | 167 | -168d | 0d |
| 171 | 1.2.1.2.2.9.1 | GUI Storyboards | 1d | 2007-04-04 | 2007-04-04 |  | -168d | 0d |
| 172 | 1.2.1.2.2.9.2 | Code ASPX Pages | 2d | 2007-04-05 | 2007-04-06 | 171 | -168d | 0d |
| 173 | 1.2.1.2.2.10 | **Restore Query Criteria** | 3d | 2007-04-09 | 2007-04-11 | 170 | -168d | 0d |
| 174 | 1.2.1.2.2.10.1 | GUI Storyboards | 1d | 2007-04-09 | 2007-04-09 |  | -168d | 0d |
| 175 | 1.2.1.2.2.10.2 | Code ASPX Pages | 2d | 2007-04-10 | 2007-04-11 | 174 | -168d | 0d |
| 176 | 1.2.1.2.2.11 | **Edit Query Criteria** | 3d | 2007-04-12 | 2007-04-16 | 173 | -168d | 0d |
| 177 | 1.2.1.2.2.11.1 | GUI Storyboards | 1d | 2007-04-12 | 2007-04-12 |  | -168d | 0d |
| 178 | 1.2.1.2.2.11.2 | Code ASPX Pages | 2d | 2007-04-13 | 2007-04-16 | 177 | -168d | 0d |
| 179 | 1.2.1.2.2.12 | **Delete Query Criteria** | 3d | 2007-04-17 | 2007-04-19 | 176 | -168d | 0d |
| 180 | 1.2.1.2.2.12.1 | GUI Storyboards | 1d | 2007-04-17 | 2007-04-17 |  | -168d | 0d |
| 181 | 1.2.1.2.2.12.2 | Code ASPX Pages | 2d | 2007-04-18 | 2007-04-19 | 180 | -168d | 0d |

| ID | WBS | Task | Type | Duration | Start | Finish | Predecessors | Total slack | Free slack | Resources |
| --- | --- | --- | --- | --- | --- | --- | --- | --- | --- | --- |
| 182 | 1.2.1.2.2.13 | **Export Hits Using Default Template** |  | 3d | 2007-04-20 | 2007-04-24 | 179 | -168d | 0d |  |
| 183 | 1.2.1.2.2.13.1 | GUI Storyboards |  | 1d | 2007-04-20 | 2007-04-20 |  | -168d | 0d |  |
| 184 | 1.2.1.2.2.13.2 | Code ASPX Pages |  | 2d | 2007-04-23 | 2007-04-24 | 183 | -168d | 0d |  |
| 185 | 1.2.1.2.2.14 | **Export Hits Using non-Default Template** |  | 3d | 2007-04-25 | 2007-04-27 | 182 | -168d | 0d |  |
| 186 | 1.2.1.2.2.14.1 | GUI Storyboards |  | 1d | 2007-04-25 | 2007-04-25 |  | -168d | 0d |  |
| 187 | 1.2.1.2.2.14.2 | Code ASPX Pages |  | 2d | 2007-04-26 | 2007-04-27 | 186 | -168d | 0d |  |
| 188 | 1.2.1.2.2.15 | **Create Export Template** |  | 3d | 2007-04-30 | 2007-05-02 | 185 | -168d | 0d |  |
| 189 | 1.2.1.2.2.15.1 | GUI Storyboards |  | 1d | 2007-04-30 | 2007-04-30 |  | -168d | 0d |  |
| 190 | 1.2.1.2.2.15.2 | Code ASPX Pages |  | 2d | 2007-05-01 | 2007-05-02 | 189 | -168d | 0d |  |
| 191 | 1.2.1.2.2.16 | **Edit Export Template** |  | 3d | 2007-05-03 | 2007-05-07 | 188 | -168d | 0d |  |
| 192 | 1.2.1.2.2.16.1 | GUI Storyboards |  | 1d | 2007-05-03 | 2007-05-03 |  | -168d | 0d |  |
| 193 | 1.2.1.2.2.16.2 | Code ASPX Pages |  | 2d | 2007-05-04 | 2007-05-07 | 192 | -168d | 0d |  |
| 194 | 1.2.1.2.2.17 | **Delete Export Template** |  | 3d | 2007-05-08 | 2007-05-10 | 191 | -168d | 0d |  |
| 195 | 1.2.1.2.2.17.1 | GUI Storyboards |  | 1d | 2007-05-08 | 2007-05-08 |  | -168d | 0d |  |
| 196 | 1.2.1.2.2.17.2 | Code ASPX Pages |  | 2d | 2007-05-09 | 2007-05-10 | 195 | -168d | 0d |  |
| 197 | 1.2.1.2.2.18 | **Print Results** |  | 1d | 2007-05-11 | 2007-05-11 | 194 | -168d | 0d |  |
| 198 | 1.2.1.2.2.18.1 | GUI Storyboards |  | 1d | 2007-05-11 | 2007-05-11 |  | -168d | 0d |  |
| 199 | 1.2.1.2.2.18.2 | Code ASPX Pages | milestone | 0d | 2007-05-11 | 2007-05-11 | 198 | -168d | 0d |  |
| 200 | 1.3 | Installers |  | 1d? | 2007-02-08 | 2007-02-08 | 2 | 66d |  |  |
| 201 | 2 | **Testing and QA** |  | 0d | 2006-07-14 | 2006-07-14 |  | 216d |  | Elisa Daly |
| 202 | 2.1 | Create Installation Qualification (IQ) | milestone | 0d | 2006-07-14 | 2006-07-14 |  | 216d | 0d |  |
| 203 | 2.2 | Validate IQ | milestone | 0d | 2006-07-14 | 2006-07-14 | 202 | 216d | 0d |  |
| 204 | 2.3 | Write Test Scripts for Web services | milestone | 0d | 2006-07-14 | 2006-07-14 | 203 | 216d | 0d |  |
| 205 | 2.4 | Write Test Plans based on Presentation Tier WorkFlow Scenarios | milestone | 0d | 2006-07-14 | 2006-07-14 | 204 | 216d | 0d |  |
| 206 | 2.5 | Execute Test Plans | milestone | 0d | 2006-07-14 | 2006-07-14 | 205 | 216d | 0d |  |
| 207 | 2.6 | Execute Web Service Test scripts | milestone | 0d | 2006-07-14 | 2006-07-14 | 206 | 216d | 0d |  |
| 208 | 2.7 | Ad hoc Testing | milestone | 0d | 2006-07-14 | 2006-07-14 | 207 | 216d | 0d |  |
| 209 | 2.8 | 0 Bug Count | milestone | 0d | 2006-07-14 | 2006-07-14 | 208 | 216d | 0d |  |
| 210 | 2.9 | FC1 (dll signing) | milestone | 0d | 2006-07-14 | 2006-07-14 | 209 | 216d | 0d |  |
| 211 | 2.10 | FC2 | milestone | 0d | 2006-07-14 | 2006-07-14 | 210 | 216d |  |  |

| ID | WBS | Task | Type | Duration | Start | Finish | Predecessors | Total slack | Free slack | Resources | Work |
| --- | --- | --- | --- | --- | --- | --- | --- | --- | --- | --- | --- |
| 212 | 2.11 | **Final Release** |  | 0d | 2006-07-14 | 2006-07-14 |  | 216d |  |  |  |
| 213 | 2.11.1 | Final Release Testing and QA | milestone | 0d | 2006-07-14 | 2006-07-14 |  | 216d |  |  |  |
| 214 | 2.11.2 | Signoff (RTM) | milestone | 0d | 2006-07-14 | 2006-07-14 |  | 216d |  |  |  |
| 215 | 3 | **Documentation and Training** |  | 4d? | 2006-07-14 | 2006-07-19 |  | 212d |  | Megean Schoenberg | 88h |
| 216 | 3.1 | End User |  | 1d | 2006-07-14 | 2006-07-14 |  | 215d |  | Q3 Swati Gupta | 8h |
| 217 | 3.2 | **Requirements** |  | 0d | 2006-07-14 | 2006-07-14 |  | 216d | 0d | Q3 Swati Gupta |  |
| 218 | 3.2.1 | Write Functional Requirements Specification | milestone | 0d | 2006-07-14 | 2006-07-14 |  | 216d | 0d |  |  |
| 219 | 3.2.2 | Write Services Tier Software RS | milestone | 0d | 2006-07-14 | 2006-07-14 | 218 | 216d | 0d |  |  |
| 220 | 3.2.3 | Write Presentation Tier SRS | milestone | 0d | 2006-07-14 | 2006-07-14 | 219 | 216d |  |  |  |
| 221 | 3.3 | **Admin** |  | 0d | 2006-07-14 | 2006-07-14 | 217 | 216d |  | Q3 Swati Gupta |  |
| 222 | 3.3.1 | Data Model | milestone | 0d | 2006-07-14 | 2006-07-14 |  | 216d | 0d |  |  |
| 223 | 3.3.2 | Installation Instructions | milestone | 0d | 2006-07-14 | 2006-07-14 | 222 | 216d | 0d |  |  |
| 224 | 3.3.3 | Readme (Release Notes) | milestone | 0d | 2006-07-14 | 2006-07-14 | 223 | 216d |  |  |  |
| 225 | 3.4 | **Internal Training** |  | 4d? | 2006-07-14 | 2006-07-19 |  | 212d |  | Megean Schoenberg | 48h |
| 226 | 3.4.1 | **End User** |  | 2d? | 2006-07-14 | 2006-07-17 |  | 212d |  |  | 8h |
| 227 | 3.4.1.1 | Materials Preparation |  | 1d? | 2006-07-14 | 2006-07-14 |  | 212d | 0d | Q3 Swati Gupta | 8h |
| 228 | 3.4.1.2 | Give Training |  | 1d? | 2006-07-17 | 2006-07-17 | 227 | 212d | 0d |  |  |
| 229 | 3.4.2 | **Development (SDK)** |  | 1d? | 2006-07-18 | 2006-07-18 | 228 | 212d |  | Daryl Paraguya | 8h |
| 230 | 3.4.2.1 | Materials Preparation |  | 1d? | 2006-07-18 | 2006-07-18 |  | 212d | 0d |  |  |
| 231 | 3.4.3 | **Admin** |  | 1d? | 2006-07-19 | 2006-07-19 | 230 | 212d |  |  |  |
| 232 | 3.4.3.1 | Materials Preparation |  | 1d? | 2006-07-19 | 2006-07-19 |  | 212d |  |  |  |
| 233 | 3.4.3.2 | Give Trianing |  | 1d? | 2006-07-19 | 2006-07-19 |  | 212d |  |  |  |
